# KEMAJUAN1 PROYEK 2015 - PRINT2#

Schedule from MS Project, 2015-06-12 to 2015-11-04, costs in Rp, A marks actual dates.
Toshiba

## Calendars

- KALENDER PROYEK 2015: Mon-Fri 08:00-12:00, 13:00-17:00; Sat-Sun off. Exceptions (off unless hours are given): 2015-06-26 (Hari Ulang Tahun Perusahaan RJE), 2015-07-16 (Cuti bersama Idul Fitri 1436 H), 2015-07-17 (Hari Raya Idul Fitri 1436 H), 2015-07-20 (Cuti bersaama Idul Fitri 1436 H), 2015-07-21 (Cuti bersama Idul Fitri 1436 H), 2015-08-17 (Hari Kemerdekaan RI), 2015-09-24 (Hari Raya Idul Adha 1436 H), 2015-10-14 (Tahun Baru 1437 H).

## Resources

| Resource | Rate |
| --- | --- |
| System Analyst | 50000 |
| Designer | 37500 |
| Programmer | 12500 |
| Tester | 25000 |
| Dokumentator | 12500 |
| Implementator | 25000 |
| Trainer | 25000 |
| Administrator | 9375 |
| Pemelihara | 12500 |

## Schedule

| ID | WBS | Task | Type | Duration | Start | Finish | Predecessors | Complete | Remaining | Baseline start | Baseline finish | Baseline duration | Total slack | Cost | Baseline cost | Actual cost |
| --- | --- | --- | --- | --- | --- | --- | --- | --- | --- | --- | --- | --- | --- | --- | --- | --- |
| 1 | 1 | **Analisis dan Desain Sistem** |  | 9d | 2015-06-15 A | 2015-06-25 A |  | 100% |  | 2015-06-15 | 2015-06-25 | 9d |  | 3,600,000 | 3,600,000 | 3,600,000 |
| 2 | 1.1 | Menganalisis Sistem Kepegawaian dengan melakukan wawancara kepada pihak yang ditunjuk | manual | 2d | 2015-06-15 A | 2015-06-16 A |  | 100% |  | 2015-06-15 | 2015-06-16 | 2d |  | 800,000 | 800,000 | 800,000 |
| 3 | 1.2 | Membuat Statement of Purpose, Event List, dan Context Diagram | manual | 1d | 2015-06-17 A | 2015-06-17 A | 2 | 100% |  | 2015-06-17 | 2015-06-17 | 1d |  | 400,000 | 400,000 | 400,000 |
| 4 | 1.3 | Membuat Data Flow Diagram (DFD) Levelled | manual | 1d | 2015-06-18 A | 2015-06-18 A | 3 | 100% |  | 2015-06-18 | 2015-06-18 | 1d |  | 400,000 | 400,000 | 400,000 |
| 5 | 1.4 | Membuat Kamus Data | manual | 1d | 2015-06-19 A | 2015-06-19 A | 4 | 100% |  | 2015-06-19 | 2015-06-19 | 1d |  | 400,000 | 400,000 | 400,000 |
| 6 | 1.5 | Membuat Process Specification | manual | 1d | 2015-06-22 A | 2015-06-22 A | 5 | 100% |  | 2015-06-22 | 2015-06-22 | 1d |  | 400,000 | 400,000 | 400,000 |
| 7 | 1.6 | Membuat Entity Relationship Diagram (ERD) | manual | 1d | 2015-06-23 A | 2015-06-23 A | 6 | 100% |  | 2015-06-23 | 2015-06-23 | 1d |  | 400,000 | 400,000 | 400,000 |
| 8 | 1.7 | Dokumentasi Analisis & Desain Sistem | manual | 2d | 2015-06-24 A | 2015-06-25 A | 7 | 100% |  | 2015-06-24 | 2015-06-25 | 2d |  | 800,000 | 800,000 | 800,000 |
| 9 | 2 | **Desain Aplikasi** |  | 7d | 2015-06-29 A | 2015-07-07 A |  | 100% |  | 2015-06-29 | 2015-07-07 | 7d |  | 2,100,000 | 2,100,000 | 2,100,000 |
| 10 | 2.1 | Membuat Desain Menu Aplikasi + Form Entry | manual | 2d | 2015-06-29 A | 2015-06-30 A | 8 | 100% |  | 2015-06-29 | 2015-06-30 | 2d |  | 600,000 | 600,000 | 600,000 |
| 11 | 2.2 | Membuat Desain Report + Form Report | manual | 2d | 2015-07-01 A | 2015-07-02 A | 10 | 100% |  | 2015-07-01 | 2015-07-02 | 2d |  | 600,000 | 600,000 | 600,000 |
| 12 | 2.3 | Dokumentasi Desain Aplikasi | manual | 3d | 2015-07-03 A | 2015-07-07 A | 11 | 100% |  | 2015-07-03 | 2015-07-07 | 3d |  | 900,000 | 900,000 | 900,000 |
| 13 | 3 | **Programming** |  | 55d | 2015-07-08 A | 2015-09-30 |  | 80% | 11d | 2015-07-08 | 2015-09-30 | 55d | 0d | 22,000,000 | 22,000,000 | 17,600,000 |
| 14 | 3.1 | Programming (Back End & Front End) | manual | 50d | 2015-07-08 A | 2015-09-22 | 12 | 88% | 6d | 2015-07-08 | 2015-09-22 | 50d |  | 20,000,000 | 20,000,000 | 17,600,000 |
| 15 | 3.2 | Dokumentasi program (Back End & Front End) | manual | 5d | 2015-09-23 | 2015-09-30 | 14 |  |  | 2015-09-23 | 2015-09-30 | 5d |  | 2,000,000 | 2,000,000 |  |
| 16 | 4 | **Testing Program** |  | 5d | 2015-09-23 | 2015-09-30 |  |  |  | 2015-09-23 | 2015-09-30 | 5d | 0d | 2,000,000 | 2,000,000 |  |
| 17 | 4.1 | Melakukan test terhadap program | manual | 2d | 2015-09-23 | 2015-09-25 | 14 |  |  | 2015-09-23 | 2015-09-25 | 2d |  | 800,000 | 800,000 |  |
| 18 | 4.2 | Memberikan catatan list perbaikan | manual | 1d | 2015-09-28 | 2015-09-28 | 17 |  |  | 2015-09-28 | 2015-09-28 | 1d |  | 400,000 | 400,000 |  |
| 19 | 4.3 | Dokumentasi testing program | manual | 2d | 2015-09-29 | 2015-09-30 | 18 |  |  | 2015-09-29 | 2015-09-30 | 2d |  | 800,000 | 800,000 |  |
| 20 | 5 | **Instalasi Program** |  | 2d | 2015-10-01 | 2015-10-02 |  |  |  | 2015-10-01 | 2015-10-02 | 2d | 0d | 1,600,000 | 1,600,000 |  |
| 21 | 5.1 | Setting infrastruktur & software pendukung | manual | 1d | 2015-10-01 | 2015-10-01 | 19 |  |  | 2015-10-01 | 2015-10-01 | 1d |  | 800,000 | 800,000 |  |
| 22 | 5.2 | Instalasi program ke komputer user | manual | 1d | 2015-10-02 | 2015-10-02 | 21 |  |  | 2015-10-02 | 2015-10-02 | 1d |  | 800,000 | 800,000 |  |
| 23 | 6 | **Training User / SDM** |  | 2d | 2015-10-05 | 2015-10-06 |  |  |  | 2015-10-05 | 2015-10-06 | 2d | 0d | 1,200,000 | 1,200,000 |  |
| 24 | 6.1 | Melakukan pelatihan kepada user | manual | 2d | 2015-10-05 | 2015-10-06 | 22 |  |  | 2015-10-05 | 2015-10-06 | 2d |  | 1,200,000 | 1,200,000 |  |

| ID | WBS | Task | Type | Duration | Start | Finish | Predecessors | Baseline start | Baseline finish | Baseline duration | Total slack | Cost | Baseline cost |
| --- | --- | --- | --- | --- | --- | --- | --- | --- | --- | --- | --- | --- | --- |
| 25 | 7 | **Dokumentasi** |  | 70d | 2015-06-29 | 2015-10-12 |  | 2015-06-29 | 2015-10-12 | 70d | 0d | 7,000,000 | 7,000,000 |
| 26 | 7.1 | Desain Spesifikasi Sistem | manual | 15d | 2015-06-29 | 2015-07-23 | 8 | 2015-06-29 | 2015-07-23 | 15d |  | 1,500,000 | 1,500,000 |
| 27 | 7.2 | Dokumentasi SOP | manual | 10d | 2015-07-24 | 2015-08-06 | 26 | 2015-07-24 | 2015-08-06 | 10d |  | 1,000,000 | 1,000,000 |
| 28 | 7.3 | Dokumen Administrasi Proyek | manual | 8d | 2015-08-07 | 2015-08-19 | 27 | 2015-08-07 | 2015-08-19 | 8d |  | 800,000 | 800,000 |
| 29 | 7.4 | User dan Admin Manual + Dok. Program | manual | 25d | 2015-08-20 | 2015-09-23 | 28 | 2015-08-20 | 2015-09-23 | 25d |  | 2,500,000 | 2,500,000 |
| 30 | 7.5 | Dokumen Manajemen Proyek | manual | 12d | 2015-09-25 | 2015-10-12 | 29 | 2015-09-25 | 2015-10-12 | 12d |  | 1,200,000 | 1,200,000 |
| 31 | 8 | **Maintenance** |  | 20d | 2015-10-07 | 2015-11-04 |  | 2015-10-07 | 2015-11-04 | 20d | 0d | 2,000,000 | 2,000,000 |
| 32 | 8.1 | Pemeliharaan & Perbaikan Sistem | manual | 20d | 2015-10-07 | 2015-11-04 | 24 | 2015-10-07 | 2015-11-04 | 20d |  | 2,000,000 | 2,000,000 |
| 33 | 9 | **Administrasi** |  | 80d | 2015-06-12 | 2015-10-12 |  | 2015-06-12 | 2015-10-12 | 80d | 0d | 6,000,000 | 6,000,000 |
| 34 | 9.1 | Melakukan administrasi proyek & mendokumentasikannya | manual | 80d | 2015-06-12 | 2015-10-12 |  | 2015-06-12 | 2015-10-12 | 80d |  | 6,000,000 | 6,000,000 |
| 35 | 10 | **Biaya Lain-lain** |  | 1d? | 2015-06-15 | 2015-06-15 |  | 2015-06-15 | 2015-06-15 | 1d? | 0d | 27,500,000 | 27,500,000 |
| 36 | 10.1 | Biaya Bahan & Pencetakan | manual | 1d? | 2015-06-15 | 2015-06-15 |  | 2015-06-15 | 2015-06-15 | 1d? |  | 1,600,000 | 1,600,000 |
| 37 | 10.2 | Perubahan Analisis (bila diperlukan) | manual | 1d? | 2015-06-15 | 2015-06-15 |  | 2015-06-15 | 2015-06-15 | 1d? |  | 1,200,000 | 1,200,000 |
| 38 | 10.3 | Perubahan Bentuk Desain | manual | 1d? | 2015-06-15 | 2015-06-15 |  | 2015-06-15 | 2015-06-15 | 1d? |  | 900,000 | 900,000 |
| 39 | 10.4 | Penambahan Program (bila diperlukan) | manual | 1d? | 2015-06-15 | 2015-06-15 |  | 2015-06-15 | 2015-06-15 | 1d? |  | 2,800,000 | 2,800,000 |
| 40 | 10.5 | Biaya Cadangan Operasional | manual | 1d? | 2015-06-15 | 2015-06-15 |  | 2015-06-15 | 2015-06-15 | 1d? |  | 3,000,000 | 3,000,000 |
| 41 | 10.6 | Biaya Cadangan Tak Terduga | manual | 1d? | 2015-06-15 | 2015-06-15 |  | 2015-06-15 | 2015-06-15 | 1d? |  | 3,000,000 | 3,000,000 |
| 42 | 10.7 | Biaya Finger Print & Infrastruktur lainnya | manual | 1d? | 2015-06-15 | 2015-06-15 |  | 2015-06-15 | 2015-06-15 | 1d? |  | 15,000,000 | 15,000,000 |
