# OPTIMASI KE-2#

Schedule from MS Project, 2015-06-15 to 2015-07-06, costs in Rp..
Toshiba

## Calendars

- Standard: Mon-Fri 08:00-12:00, 13:00-17:00; Sat-Sun off. Exceptions (off unless hours are given): 2015-06-26 (Hari ulang tahun perusahaan RJE).

## Resources

| Resource | Rate |
| --- | --- |
| System Analyst | 50000 |
| Designer | 37500 |

## Schedule

| ID | WBS | Task | Type | Duration | Start | Finish | Predecessors | Total slack | Resources | Work | Cost |
| --- | --- | --- | --- | --- | --- | --- | --- | --- | --- | --- | --- |
| 1 | 1 | **Analisis dan Desain Sistem** |  | 9d | 2015-06-15 | 2015-06-25 |  | 0d |  | 72h | 3,600,000 |
| 2 | 1.1 | Menganalisis Sistem Kepegawaian dengan melakukan wawancara kepada pihak yang ditunjuk | manual | 2d | 2015-06-15 | 2015-06-16 |  |  | System Analyst | 16h | 800,000 |
| 3 | 1.2 | Membuat Statement of Purpose, Event List, dan Context Diagram | manual | 1d | 2015-06-17 | 2015-06-17 | 2 |  | System Analyst | 8h | 400,000 |
| 4 | 1.3 | Membuat Data Flow Diagram (DFD) Levelled | manual | 1d | 2015-06-18 | 2015-06-18 | 3 |  | System Analyst | 8h | 400,000 |
| 5 | 1.4 | Membuat Kamus Data | manual | 1d | 2015-06-19 | 2015-06-19 | 4 |  | System Analyst | 8h | 400,000 |
| 6 | 1.5 | Membuat Process Specification | manual | 1d | 2015-06-22 | 2015-06-22 | 5 |  | System Analyst | 8h | 400,000 |
| 7 | 1.6 | Membuat Entity Relationship Diagram (ERD) | manual | 1d | 2015-06-23 | 2015-06-23 | 6 |  | System Analyst | 8h | 400,000 |
| 8 | 1.7 | Dokumentasi Analisis & Desain Sistem | manual | 2d | 2015-06-24 | 2015-06-25 | 7 |  | System Analyst | 16h | 800,000 |
| 9 | 2 | **Desain Aplikasi** |  | 6d | 2015-06-29 | 2015-07-06 |  | 0d |  | 48h | 1,800,000 |
| 10 | 2.1 | Membuat Desain Menu Aplikasi + Form Entri | manual | 2d | 2015-06-29 | 2015-06-30 | 8 |  | Designer | 16h | 600,000 |
| 11 | 2.2 | Membuat Desain Report + Form Report | manual | 2d | 2015-06-30 | 2015-07-01 | 10FS-1d |  | Designer | 16h | 600,000 |
| 12 | 2.3 | **Dokumentasi Desain Aplikasi** |  | 2d | 2015-07-03 | 2015-07-06 |  | 0d | Designer | 16h | 600,000 |
| 13 | 2.3.1 | Dokumentasi Menu |  | 1d | 2015-07-06 | 2015-07-06 | 11FS+2d | 0d |  |  |  |
| 14 | 2.3.2 | Dokumentasi Form | manual | 1d | 2015-07-03 | 2015-07-03 |  |  |  |  |  |
| 15 | 2.3.3 | Dokumentasi Report | manual | 1d | 2015-07-06 | 2015-07-06 | 14 |  |  |  |  |
