# PENUGASAN TIM PROYEK 2015#

Schedule from MS Project, 2015-06-12 to 2015-11-04.
Toshiba

## Calendars

- KALENDER PROYEK 2015: Mon-Fri 08:00-12:00, 13:00-17:00; Sat-Sun off. Exceptions (off unless hours are given): 2015-06-26 (Hari Ulang Tahun Perusahaan RJE), 2015-07-16 (Cuti bersama Idul Fitri 1436 H), 2015-07-17 (Hari Raya Idul Fitri 1436 H), 2015-07-20 (Cuti bersaama Idul Fitri 1436 H), 2015-07-21 (Cuti bersama Idul Fitri 1436 H), 2015-08-17 (Hari Kemerdekaan RI), 2015-09-24 (Hari Raya Idul Adha 1436 H), 2015-10-14 (Tahun Baru 1437 H).

## Resources

| Resource | Rate |
| --- | --- |
| System Analyst | 50000 |
| Designer | 37500 |
| Programmer | 12500 |
| Tester | 25000 |
| Dokumentator | 12500 |
| Implementator | 25000 |
| Trainer | 25000 |
| Administrator | 9375 |
| Pemelihara | 12500 |

## Schedule

| ID | WBS | Task | Type | Duration | Start | Finish | Predecessors | Total slack |
| --- | --- | --- | --- | --- | --- | --- | --- | --- |
| 1 | 1 | **Analisis dan Desain Sistem** |  | 9d | 2015-06-15 | 2015-06-25 |  | 0d |
| 2 | 1.1 | Menganalisis Sistem Kepegawaian dengan melakukan wawancara kepada pihak yang ditunjuk | manual | 2d | 2015-06-15 | 2015-06-16 |  |  |
| 3 | 1.2 | Membuat Statement of Purpose, Event List, dan Context Diagram | manual | 1d | 2015-06-17 | 2015-06-17 | 2 |  |
| 4 | 1.3 | Membuat Data Flow Diagram (DFD) Levelled | manual | 1d | 2015-06-18 | 2015-06-18 | 3 |  |
| 5 | 1.4 | Membuat Kamus Data | manual | 1d | 2015-06-19 | 2015-06-19 | 4 |  |
| 6 | 1.5 | Membuat Process Specification | manual | 1d | 2015-06-22 | 2015-06-22 | 5 |  |
| 7 | 1.6 | Membuat Entity Relationship Diagram (ERD) | manual | 1d | 2015-06-23 | 2015-06-23 | 6 |  |
| 8 | 1.7 | Dokumentasi Analisis & Desain Sistem | manual | 2d | 2015-06-24 | 2015-06-25 | 7 |  |
| 9 | 2 | **Desain Aplikasi** |  | 7d | 2015-06-29 | 2015-07-07 |  | 0d |
| 10 | 2.1 | Membuat Desain Menu Aplikasi + Form Entry | manual | 2d | 2015-06-29 | 2015-06-30 | 8 |  |
| 11 | 2.2 | Membuat Desain Report + Form Report | manual | 2d | 2015-07-01 | 2015-07-02 | 10 |  |
| 12 | 2.3 | Dokumentasi Desain Aplikasi | manual | 3d | 2015-07-03 | 2015-07-07 | 11 |  |
| 13 | 3 | **Programming** |  | 55d | 2015-07-08 | 2015-09-30 |  | 0d |
| 14 | 3.1 | Programming (Back End & Front End) | manual | 50d | 2015-07-08 | 2015-09-22 | 12 |  |
| 15 | 3.2 | Dokumentasi program (Back End & Front End) | manual | 5d | 2015-09-23 | 2015-09-30 | 14 |  |
| 16 | 4 | **Testing Program** |  | 5d | 2015-09-23 | 2015-09-30 |  | 0d |
| 17 | 4.1 | Melakukan test terhadap program | manual | 2d | 2015-09-23 | 2015-09-25 | 14 |  |
| 18 | 4.2 | Memberikan catatan list perbaikan | manual | 1d | 2015-09-28 | 2015-09-28 | 17 |  |
| 19 | 4.3 | Dokumentasi testing program | manual | 2d | 2015-09-29 | 2015-09-30 | 18 |  |
| 20 | 5 | **Instalasi Program** |  | 2d | 2015-10-01 | 2015-10-02 |  | 0d |
| 21 | 5.1 | Setting infrastruktur & software pendukung | manual | 1d | 2015-10-01 | 2015-10-01 | 19 |  |
| 22 | 5.2 | Instalasi program ke komputer user | manual | 1d | 2015-10-02 | 2015-10-02 | 21 |  |
| 23 | 6 | **Training User / SDM** |  | 2d | 2015-10-05 | 2015-10-06 |  | 0d |
| 24 | 6.1 | Melakukan pelatihan kepada user | manual | 2d | 2015-10-05 | 2015-10-06 | 22 |  |

| ID | WBS | Task | Type | Duration | Start | Finish | Predecessors | Total slack |
| --- | --- | --- | --- | --- | --- | --- | --- | --- |
| 25 | 7 | **Dokumentasi** |  | 70d | 2015-06-29 | 2015-10-12 |  | 0d |
| 26 | 7.1 | Desain Spesifikasi Sistem | manual | 15d | 2015-06-29 | 2015-07-23 | 8 |  |
| 27 | 7.2 | Dokumentasi SOP | manual | 10d | 2015-07-24 | 2015-08-06 | 26 |  |
| 28 | 7.3 | Dokumen Administrasi Proyek | manual | 8d | 2015-08-07 | 2015-08-19 | 27 |  |
| 29 | 7.4 | User dan Admin Manual + Dok. Program | manual | 25d | 2015-08-20 | 2015-09-23 | 28 |  |
| 30 | 7.5 | Dokumen Manajemen Proyek | manual | 12d | 2015-09-25 | 2015-10-12 | 29 |  |
| 31 | 8 | **Maintenance** |  | 20d | 2015-10-07 | 2015-11-04 |  | 0d |
| 32 | 8.1 | Pemeliharaan & Perbaikan Sistem | manual | 20d | 2015-10-07 | 2015-11-04 | 24 |  |
| 33 | 9 | **Administrasi** |  | 80d | 2015-06-12 | 2015-10-12 |  | 0d |
| 34 | 9.1 | Melakukan administrasi proyek & mendokumentasikannya | manual | 80d | 2015-06-12 | 2015-10-12 |  |  |
