# PENGONTROLAN PROYEK KE-1#

Schedule from MS Project, 2015-06-15 to 2015-07-07, costs in Rp., A marks actual dates.
PT. REKA JAYA ELEKTRIK

## Calendars

- Standard: Mon-Fri 08:00-12:00, 13:00-17:00; Sat-Sun off. Exceptions (off unless hours are given): 2015-06-26 (Hari ulang tahun perusahaan RJE).

## Resources

| Resource | Rate |
| --- | --- |
| System Analyst | 50000 |
| Designer | 37500 |

## Schedule

| ID | WBS | Task | Type | Duration | Start | Finish | Predecessors | Complete | Remaining | Baseline start | Baseline finish | Baseline duration | Total slack | Resources | Work | Actual work | Cost | Baseline cost | Actual cost |
| --- | --- | --- | --- | --- | --- | --- | --- | --- | --- | --- | --- | --- | --- | --- | --- | --- | --- | --- | --- |
| 1 | 1 | **Analisis dan Desain Sistem** |  | 9d | 2015-06-15 A | 2015-06-25 A |  | 100% |  | 2015-06-15 | 2015-06-25 | 9d |  |  | 72h | 72h | 3,600,000 | 3,600,000 | 3,600,000 |
| 2 | 1.1 | Menganalisis Sistem Kepegawaian dengan melakukan wawancara kepada pihak yang ditunjuk | manual | 2d | 2015-06-15 A | 2015-06-16 A |  | 100% |  | 2015-06-15 | 2015-06-16 | 2d |  | System Analyst | 16h | 16h | 800,000 | 800,000 | 800,000 |
| 3 | 1.2 | Membuat Statement of Purpose, Event List, dan Context Diagram | manual | 1d | 2015-06-17 A | 2015-06-17 A | 2 | 100% |  | 2015-06-17 | 2015-06-17 | 1d |  | System Analyst | 8h | 8h | 400,000 | 400,000 | 400,000 |
| 4 | 1.3 | Membuat Data Flow Diagram (DFD) Levelled | manual | 1d | 2015-06-18 A | 2015-06-18 A | 3 | 100% |  | 2015-06-18 | 2015-06-18 | 1d |  | System Analyst | 8h | 8h | 400,000 | 400,000 | 400,000 |
| 5 | 1.4 | Membuat Kamus Data | manual | 1d | 2015-06-19 A | 2015-06-19 A | 4 | 100% |  | 2015-06-19 | 2015-06-19 | 1d |  | System Analyst | 8h | 8h | 400,000 | 400,000 | 400,000 |
| 6 | 1.5 | Membuat Process Specification | manual | 1d | 2015-06-22 A | 2015-06-22 A | 5 | 100% |  | 2015-06-22 | 2015-06-22 | 1d |  | System Analyst | 8h | 8h | 400,000 | 400,000 | 400,000 |
| 7 | 1.6 | Membuat Entity Relationship Diagram (ERD) | manual | 1d | 2015-06-23 A | 2015-06-23 A | 6 | 100% |  | 2015-06-23 | 2015-06-23 | 1d |  | System Analyst | 8h | 8h | 400,000 | 400,000 | 400,000 |
| 8 | 1.7 | Dokumentasi Analisis & Desain Sistem | manual | 2d | 2015-06-24 A | 2015-06-25 A | 7 | 100% |  | 2015-06-24 | 2015-06-25 | 2d |  | System Analyst | 16h | 16h | 800,000 | 800,000 | 800,000 |
| 9 | 2 | **Desain Aplikasi** |  | 7d | 2015-06-29 A | 2015-07-07 |  | 29% | 5d |  |  |  | 0d |  | 56h | 16h | 2,100,000 |  | 600,000 |
| 10 | 2.1 | Membuat Desain Menu Aplikasi + Form Entri | manual | 2d | 2015-06-29 A | 2015-06-30 A | 8 | 100% |  |  |  |  |  | Designer | 16h | 16h | 600,000 |  | 600,000 |
| 11 | 2.2 | Membuat Desain Report + Form Report | manual | 2d | 2015-07-01 | 2015-07-02 | 10 |  |  |  |  |  |  | Designer | 16h |  | 600,000 |  |  |
| 12 | 2.3 | Dokumentasi Desain Aplikasi | manual | 3d | 2015-07-03 | 2015-07-07 | 11 |  |  |  |  |  |  | Designer | 24h |  | 900,000 |  |  |
